# MPP_BR.A.16.POI.039.00 - PROJETO FRAUDE OI

Schedule from MS Project, 2017-09-18 to 2018-08-20, A marks actual dates.
SSI

## Calendars

- Standard: Mon-Fri 08:00-12:00, 13:00-17:00; Sat-Sun off. Exceptions (off unless hours are given): 2017-09-07 to 2020-09-07 (Feriado Sete Setembro, recurring), 2017-10-12 to 2020-10-12 (Nsa Aparecida, recurring), 2017-10-16 to 2019-10-16 (Dia do Informática, recurring), 2017-11-02 to 2020-11-02 (Finados, recurring), 2017-11-15 to 2020-11-15 (Republica, recurring), 2017-12-25 to 2020-12-25 (Natal, recurring), 2017-12-31 to 2019-12-31 (Vespera Ano Novo, recurring), 2018-01-01 to 2021-01-01 (Ano Novo, recurring), 2018-02-12 to 2018-02-13 (Carnaval 2018), 2018-03-30 (Semana Santa), 2018-04-21 to 2019-04-21 (Tiradentes, recurring), 2018-05-01 to 2020-05-01 (Dia do Trabalho, recurring), 2018-05-31 (Corpus Christi 2018).

## Resources

| Resource |
| --- |
| Andre Jacomino |
| Nuno Pestana |
| WeDo |
| Oi |
| Kleyton |
| DIEO |
| Operações |
| WeDo PT |
| TI |
| Leandro |
| Cezar |
| Oi/DIEO/WEDO |
| WeDO/Operações |
| MArcellus |
| Placido |

## Schedule

| ID | WBS | Task | Type | Duration | Start | Finish | Predecessors | Complete | Remaining | Baseline start | Baseline finish | Baseline duration | Total slack | Free slack | Constraint | Resources | Work | Actual work |
| --- | --- | --- | --- | --- | --- | --- | --- | --- | --- | --- | --- | --- | --- | --- | --- | --- | --- | --- |
| 1 | 1 | **Projeto RAID FMS OI - Programa 1 ==== PG60 ====** |  | 229d | 2017-09-18 A | 2018-08-20 |  | 33% | 154.03d | 2017-09-18 | 2019-02-28 | 359d | 0d |  |  |  | 3032h | 1160.71h |
| 2 | 1.1 | **PRJ00024387 - Marcos de Aquisição de Infra-estrutura** |  | 229d | 2017-09-18 A | 2018-08-20 |  | 97% | 6.11d | 2017-09-18 | 2017-12-07 | 55d | 0d |  |  |  | 120h | 116.8h |
| 3 | 1.1.1 | **Acessos Lógicos** |  | 10d | 2017-09-18 A | 2017-09-29 A |  | 100% |  | 2017-09-18 | 2017-09-29 | 10d |  |  |  |  | 80h | 80h |
| 4 | 1.1.1.1 | Enviar dados de acesso e contas de serviço |  | 3d | 2017-09-18 A | 2017-09-20 A |  | 100% |  | 2017-09-18 | 2017-09-20 | 3d |  |  |  | WeDo | 24h | 24h |
| 5 | 1.1.1.2 | Liberar acessos |  | 7d | 2017-09-21 A | 2017-09-29 A | 4 | 100% |  | 2017-09-21 | 2017-09-29 | 7d |  |  |  | Oi | 56h | 56h |
| 6 | 1.1.1.3 | Acessos Lógicos Liberados | milestone | 0d | 2017-09-29 A | 2017-09-29 A | 5 | 100% |  | 2017-09-29 | 2017-09-29 | 0d |  |  |  |  |  |  |
| 7 | 1.1.2 | Disponibilização DEV Onda 2 (HML RAID) | manual | 1d | 2017-10-27 A | 2017-10-27 A |  | 100% |  |  |  |  |  |  |  | Oi | 8h | 8h |
| 8 | 1.1.3 | Instalação do Vanila em DEV Onda 2 |  | 4d | 2017-10-27 A | 2017-11-03 | 7 | 90% | 0.4d |  |  |  | 102.92d | 6.92d |  | WeDo | 32h | 28.8h |
| 9 | 1.1.4 | PRJ00024506 - Ambiente de DEV disponível | milestone | 0d | 2017-11-29 A | 2017-11-29 |  | 50% | 0d | 2017-09-29 | 2017-09-29 | 0d | 125d | 0d | start no earlier than 2017-11-29 | Oi |  |  |
| 10 | 1.1.5 | PRJ00024506 - Ambiente de HML disponível | milestone | 0d | 2018-05-15 A | 2018-05-15 |  | 50% | 0d | 2017-11-16 | 2017-11-16 | 0d | 68d |  | start no earlier than 2018-05-15 | Oi |  |  |
| 11 | 1.1.6 | PRJ00024931 - Ambiente de PRD disponível | milestone | 0d | 2018-08-20 | 2018-08-20 |  |  |  | 2017-11-23 | 2017-11-23 | 0d | 0d |  | start no earlier than 2018-08-20 | Oi |  |  |
| 12 | 1.2 | **PRJ00025887 - ONDA 1: Planejamento e Setup** |  | 28d | 2017-09-18 A | 2017-10-27 |  | 90% | 2.67d | 2017-09-18 | 2017-10-05 | 14d | 201d |  |  |  | 448h | 408h |
| 13 | 1.2.1 | Acessos Físicos Liberados | milestone | 0d | 2017-09-18 A | 2017-09-18 A |  | 100% |  | 2017-09-18 | 2017-09-18 | 0d |  |  |  | Oi; WeDo |  |  |
| 14 | 1.2.2 | Levantamento e elaboração Blueprint |  | 12d | 2017-09-18 A | 2017-10-03 A |  | 100% |  | 2017-09-18 | 2017-10-03 | 12d |  |  |  | WeDo; Oi | 192h | 192h |
| 15 | 1.2.3 | Validação do blueprint Oi | manual | 3d | 2017-10-04 A | 2017-10-06 A | 14 | 100% |  |  |  |  |  |  |  | Leandro | 24h | 24h |
| 16 | 1.2.4 | Validação do blueprint WeDo | manual | 13d | 2017-10-09 A | 2017-10-27 | 15 | 77% | 3d |  |  |  |  |  |  | Placido | 104h | 80h |
| 17 | 1.2.5 | Elaborar Plano de Desenvolvimento do Projeto (PDP) |  | 6d | 2017-09-26 A | 2017-10-03 A | 14SS+6d | 100% |  | 2017-09-26 | 2017-10-03 | 6d |  |  |  | WeDo | 48h | 48h |
| 18 | 1.2.6 | Elaborar Material kick-off | manual | 1d | 2017-10-04 A | 2017-10-04 A | 17 | 100% |  | 2017-10-04 | 2017-10-04 | 1d |  |  |  | Oi | 8h | 8h |
| 19 | 1.2.7 | Reunião de Kick-off |  | 1d | 2017-10-05 | 2017-10-05 | 14 |  |  | 2017-10-05 | 2017-10-05 | 1d | 215d | 0d | start no earlier than 2017-10-05 | WeDo; Oi | 16h |  |
| 20 | 1.2.8 | Onda 1 - Planejamento e Setup - Finalizada | milestone | 0d | 2017-10-05 | 2017-10-05 | 19 |  |  | 2017-10-05 | 2017-10-05 | 0d | 215d |  |  |  |  |  |
| 21 | 1.2.9 | **Treinamento - Conceitos Básicos - Teoria (FMS-01)** |  | 6d | 2017-10-06 A | 2017-10-17 A |  | 100% |  | 2017-10-06 | 2017-10-17 | 6d |  |  |  |  | 56h | 56h |
| 22 | 1.2.9.1 | Elaborar material |  | 5d | 2017-10-06 A | 2017-10-13 A | 20 | 100% |  | 2017-10-06 | 2017-10-13 | 5d |  |  |  | WeDo | 40h | 40h |
| 23 | 1.2.9.2 | Ambiente disponibilizado | milestone | 0d | 2017-10-13 A | 2017-10-13 A | 22 | 100% |  | 2017-10-13 | 2017-10-13 | 0d |  |  |  | Oi |  |  |
| 24 | 1.2.9.3 | Realizar Treinamento |  | 1d | 2017-10-17 A | 2017-10-17 A | 23 | 100% |  | 2017-10-17 | 2017-10-17 | 1d |  |  |  | Oi; WeDo | 16h | 16h |
| 25 | 1.2.9.4 | Treinamento Finalizado | milestone | 0d | 2017-10-17 A | 2017-10-17 A | 24 | 100% |  | 2017-10-17 | 2017-10-17 | 0d |  |  |  |  |  |  |

Notes:
- 9: Contingencia será ambiente RAID UC (aguardando chegada do serv. novo)

| ID | WBS | Task | Type | Duration | Start | Finish | Predecessors | Complete | Remaining | Baseline start | Baseline finish | Baseline duration | Total slack | Free slack | Resources | Work | Actual work |
| --- | --- | --- | --- | --- | --- | --- | --- | --- | --- | --- | --- | --- | --- | --- | --- | --- | --- |
| 26 | 1.3 | **PRJ00025351/SUB25837 - ONDA 2: TV off line (Quick Wins - Motor de Fraude)** |  | 14d | 2017-10-04 A | 2017-10-25 |  | 97% | 0.49d | 2017-10-23 | 2018-01-16 | 58d | 0d |  |  | 280h | 201.6h |
| 27 | 1.3.1 | **Detalhamento de regras de negócio e critérios de aceitação** |  | 9d | 2017-10-04 A | 2017-10-18 |  | 99% | 0d |  |  |  | 0d |  | Kleyton | 168h | 96h |
| 28 | 1.3.1.1 | 1o lote de regras para validação TI/WEDO (fontes de dados ainda indefinidas) | manual | 3d | 2017-10-04 A | 2017-10-06 A |  | 100% |  |  |  |  |  |  | Kleyton | 24h | 24h |
| 29 | 1.3.1.2 | 2o lote de regras para validação TI/WEDO | manual | 8d | 2017-10-04 A | 2017-10-17 A |  | 100% |  |  |  |  |  |  | Kleyton | 64h | 64h |
| 30 | 1.3.1.3 | Entrega versão final da documentação de regras | manual | 1d | 2017-10-18 A | 2017-10-18 A | 29 | 100% |  |  |  |  |  |  | Cezar | 8h | 8h |
| 31 | 1.3.2 | Validação do detalhamento de regras e criterios de aceitação | manual | 3d | 2017-10-18 A | 2017-10-20 A | 27 | 100% |  |  |  |  |  |  | WeDo; TI | 48h | 48h |
| 32 | 1.3.3 | Elaboração DAS de Arquitetura | manual | 8d | 2017-10-13 A | 2017-10-25 | 31FF | 90% | 0.8d |  |  |  |  |  | MArcellus | 64h | 57.6h |
| 33 | 1.4 | **Análise (Desenho de Solução, Especificação Técnica, Cenários de Teste e Critérios de Aceitação)** |  | 16d | 2017-10-23 A | 2017-11-14 |  | 83% | 2.76d | 2017-10-23 | 2017-11-08 | 12d | 0d |  | WeDo; Oi | 520h | 434.31h |
| 34 | 1.4.1 | Elaboração de DSOL RAID-FMS | manual | 12d | 2017-10-23 A | 2017-11-08 A | 31 | 100% |  |  |  |  |  |  | WeDo; Oi | 192h | 192h |
| 35 | 1.4.2 | Aprovação de DSOL RAID-FMS | manual | 2d | 2017-11-08 A | 2017-11-09 A | 34FF | 100% |  |  |  |  |  |  | Kleyton | 16h | 16h |
| 36 | 1.4.3 | Elaboração de plano de testes Consolidado | manual | 3d | 2017-11-09 A | 2017-11-13 | 31, 34 | 30% | 2.1d |  |  |  |  |  | WeDo; Oi | 48h | 14.4h |
| 37 | 1.4.4 | Aprovação de plano de testes Consolidado | manual | 1d | 2017-11-14 | 2017-11-14 | 36 |  |  |  |  |  |  |  | Kleyton | 8h |  |
| 38 | 1.5 | Construção e Testes Unitários no ambiente DEV (HML RAID) |  | 30d | 2017-11-10 | 2017-12-22 | 8FS+1d, 35 |  |  | 2017-11-09 | 2017-12-21 | 30d | 99d | 0d | WeDo | 240h |  |
| 39 | 1.6 | Atualização de Servidores DEV no CMDB [agente DISCOVER] | manual | 5d | 2017-11-29 | 2017-12-05 | 9 |  |  |  |  |  |  |  | Oi | 40h |  |
| 40 | 1.7 | Testes de Sistema (HML RAID) |  | 4d | 2017-12-27 | 2018-01-02 | 38FS+1d |  |  | 2017-12-22 | 2017-12-28 | 4d | 99d | 0d | WeDo | 32h |  |
| 41 | 1.8 | UAT em ambiente DEV (Definitivo) |  | 4d | 2018-01-03 | 2018-01-08 | 40, 9 |  |  | 2018-01-02 | 2018-01-05 | 4d | 102d | 0d | WeDo; Oi | 64h |  |
| 42 | 1.9 | **Definição responsabilidades N1/N2 [WEDO/Operações]** |  | 10d | 2017-12-27 | 2018-01-10 | 38FS+1d |  |  |  |  |  | 137d |  | Oi/DIEO/WEDO | 376h |  |
| 43 | 1.9.1 | Definição de arvore de atendimento remedy [CCO/N1/N2/N3] |  | 5d | 2017-12-27 | 2018-01-03 | 38FS+1d |  |  |  |  |  | 157d |  | WeDo; Oi; Operações | 120h |  |
| 44 | 1.9.2 | Elaboração de matrix RACI [responsáveis x atividades] |  | 5d | 2017-12-27 | 2018-01-03 | 38FS+1d |  |  |  |  |  | 157d |  | WeDO/Operações | 40h |  |
| 45 | 1.9.3 | Elaborar Runbook |  | 5d | 2017-12-27 | 2018-01-03 | 38FS+1d |  |  | 2017-12-22 | 2017-12-27 | 3d | 137d | 0d | WeDo | 40h |  |
| 46 | 1.9.4 | Validação de runbook |  | 5d | 2018-01-04 | 2018-01-10 | 45 |  |  |  |  |  | 137d | 0d | Oi | 40h |  |
| 47 | 1.9.5 | Elaboração de MOP |  | 5d | 2017-12-27 | 2018-01-03 | 38FS+1d |  |  |  |  |  | 156d | 0d | WeDo | 40h |  |
| 48 | 1.9.6 | Workshop com Operações |  | 1d | 2018-01-04 | 2018-01-04 | 47 |  |  |  |  |  | 156d |  | WeDo; Operações | 16h |  |
| 49 | 1.10 | Construção de scripts de monitoração |  | 15d | 2018-01-11 | 2018-01-31 | 45, 46 |  |  |  |  |  | 137d |  | Operações | 120h |  |
| 50 | 1.11 | Construção de scripts de transmissão |  | 15d | 2018-01-11 | 2018-01-31 | 45, 46 |  |  |  |  |  | 137d |  | Operações | 120h |  |
| 51 | 1.12 | Testes de Conectividade e Transmissão [liberação portas de firewall e gestão de acesso] |  | 5d | 2017-11-29 | 2017-12-05 | 33, 9 |  |  |  |  |  | 176d |  | WeDo; Oi | 80h |  |
| 52 | 1.13 | Elaborar PLIM |  | 2d | 2018-01-03 | 2018-01-04 | 38, 40 |  |  | 2018-01-02 | 2018-01-03 | 2d | 99d | 0d | WeDo | 16h |  |
| 53 | 1.14 | Abertura de CRQ |  | 1d | 2018-01-04 | 2018-01-04 | 52FF |  |  |  |  |  | 99d | 0d | Oi | 8h |  |
| 54 | 1.15 | Aprovação de CRQ |  | 5d | 2018-01-05 | 2018-01-11 | 52, 53 |  |  |  |  |  | 99d | 0d | DIEO | 40h |  |
| 55 | 1.16 | Planejamento e aprovação de GMUD |  | 5d | 2018-01-12 | 2018-01-18 | 54, 41 |  |  |  |  |  | 99d | 0d | DIEO | 40h |  |
| 56 | 1.17 | Pacote RAID-FMS pronto para Implantação |  | 2d | 2018-01-09 | 2018-01-10 | 41 |  |  | 2018-01-08 | 2018-01-09 | 2d | 105d | 6d | WeDo | 16h |  |
| 57 | 1.18 | Implantação [considerando ambiente DEV Definitiva como contingencia de produção Onda 2) |  | 2d | 2018-01-19 | 2018-01-22 | 9, 56, 41, 55 |  |  |  |  |  | 99d | 0d | WeDo; Oi | 32h |  |
| 58 | 1.19 | Operação Assistida |  | 5d | 2018-01-24 | 2018-01-30 | 57FS+1d |  |  | 2018-01-10 | 2018-01-16 | 5d | 138d | 0d | WeDo; Oi | 80h |  |
| 59 | 1.20 | Entrega da especificação técnica |  | 5d | 2018-01-24 | 2018-01-30 | 56, 58SS |  |  |  |  |  | 138d | 0d |  |  |  |
| 60 | 1.21 | WAC - Analytics (calibragem das regras) |  | 45d | 2018-01-23 | 2018-03-28 | 57 |  |  | 2017-12-04 | 2018-02-06 | 45d | 99d |  | WeDo PT | 360h |  |
| 61 | 1.22 | Onda 2 - TV off line - Finalizada | milestone | 0d | 2018-01-30 | 2018-01-30 | 58, 59 |  |  | 2018-01-16 | 2018-01-16 | 0d | 138d |  |  |  |  |

Notes:
- 38: Avaliar a possibilidade de quebrar entregas (quais)
